# 自动驾驶管理系统

Schedule from a web Gantt chart, 2026-03-25 to 2026-03-25.
Saturdays and Sundays are off

## Schedule

| ID | WBS | Task | Duration | Start | Finish |
| --- | --- | --- | --- | --- | --- |
| 2 | 1 | **AVP平台** | 1d | 2026-03-25 | 2026-03-25 |
| 3 | 1.1 | **代客泊车预约系统 （移动端）** | 1d | 2026-03-25 | 2026-03-25 |
| 4 | 1.1.1 | **首页** | 1d | 2026-03-25 | 2026-03-25 |
| 5 | 1.1.1.1 | 登录注册 | 1d | 2026-03-25 | 2026-03-25 |
| 6 | 1.1.1.2 | 用户定位展示 | 1d | 2026-03-25 | 2026-03-25 |
| 7 | 1.1.1.3 | 车辆定位展示 | 1d | 2026-03-25 | 2026-03-25 |
| 8 | 1.1.1.4 | 停车场分布展示 | 1d | 2026-03-25 | 2026-03-25 |
| 9 | 1.1.1.5 | 车辆状态展示 | 1d | 2026-03-25 | 2026-03-25 |
| 10 | 1.1.1.6 | 一键泊车 | 1d | 2026-03-25 | 2026-03-25 |
| 11 | 1.1.1.7 | 一键召车 | 1d | 2026-03-25 | 2026-03-25 |
| 12 | 1.1.1.8 | 过程跟踪 | 1d | 2026-03-25 | 2026-03-25 |
| 13 | 1.1.2 | **个人中心** | 1d | 2026-03-25 | 2026-03-25 |
| 14 | 1.1.2.1 | 车辆管理 | 1d | 2026-03-25 | 2026-03-25 |
| 15 | 1.1.2.2 | 预警管理 | 1d | 2026-03-25 | 2026-03-25 |
| 16 | 1.1.2.3 | 泊车记录 | 1d | 2026-03-25 | 2026-03-25 |
| 17 | 1.1.2.4 | 召车记录 | 1d | 2026-03-25 | 2026-03-25 |
| 18 | 1.2 | **代客泊车管理系统 （web端）** | 1d | 2026-03-25 | 2026-03-25 |
| 19 | 1.2.1 | **首页概要** | 1d | 2026-03-25 | 2026-03-25 |
| 20 | 1.2.1.1 | 停车场统计信息 | 1d | 2026-03-25 | 2026-03-25 |
| 21 | 1.2.1.2 | 客户统计信息 | 1d | 2026-03-25 | 2026-03-25 |
| 22 | 1.2.1.3 | 车辆统计信息 | 1d | 2026-03-25 | 2026-03-25 |
| 23 | 1.2.1.4 | 停车场3D可视化 | 1d | 2026-03-25 | 2026-03-25 |
| 24 | 1.2.1.5 | 可预约车位信息 | 1d | 2026-03-25 | 2026-03-25 |
| 25 | 1.2.1.6 | 在场AVP车辆信息 | 1d | 2026-03-25 | 2026-03-25 |
| 26 | 1.2.1.7 | 在场AVP车辆预警信息 | 1d | 2026-03-25 | 2026-03-25 |
| 27 | 1.2.2 | 预约管理 | 1d | 2026-03-25 | 2026-03-25 |

| ID | WBS | Task | Duration | Start | Finish |
| --- | --- | --- | --- | --- | --- |
| 28 | 1.2.3 | **场端管理** | 1d | 2026-03-25 | 2026-03-25 |
| 29 | 1.2.3.1 | 停车场管理 | 1d | 2026-03-25 | 2026-03-25 |
| 30 | 1.2.3.2 | 出入口管理 | 1d | 2026-03-25 | 2026-03-25 |
| 31 | 1.2.3.3 | 停车楼层管理 | 1d | 2026-03-25 | 2026-03-25 |
| 32 | 1.2.3.4 | 停车区域管理 | 1d | 2026-03-25 | 2026-03-25 |
| 33 | 1.2.3.5 | 停车位管理 | 1d | 2026-03-25 | 2026-03-25 |
| 34 | 1.2.3.6 | 道闸管理 | 1d | 2026-03-25 | 2026-03-25 |
| 35 | 1.2.4 | **地图管理** | 1d | 2026-03-25 | 2026-03-25 |
| 36 | 1.2.4.1 | 高精地图管理 | 1d | 2026-03-25 | 2026-03-25 |
| 37 | 1.2.4.2 | 特征地图管理 | 1d | 2026-03-25 | 2026-03-25 |
| 38 | 1.2.5 | **客户管理** | 1d | 2026-03-25 | 2026-03-25 |
| 39 | 1.2.5.1 | 泊车用户管理 | 1d | 2026-03-25 | 2026-03-25 |
| 40 | 1.2.5.2 | 泊车客户管理 | 1d | 2026-03-25 | 2026-03-25 |
| 41 | 1.2.6 | 车辆管理 | 1d | 2026-03-25 | 2026-03-25 |
| 42 | 1.2.7 | 预警管理 | 1d | 2026-03-25 | 2026-03-25 |
| 43 | 1.2.8 | **算法模块** | 1d | 2026-03-25 | 2026-03-25 |
| 44 | 1.2.8.1 | 路径规划算法 | 1d | 2026-03-25 | 2026-03-25 |
| 45 | 1.2.8.2 | 泊位分配算法 | 1d | 2026-03-25 | 2026-03-25 |
| 46 | 1.2.9 | **信息发布模块** | 1d | 2026-03-25 | 2026-03-25 |
| 47 | 1.2.9.1 | 路径信息发布 | 1d | 2026-03-25 | 2026-03-25 |
| 48 | 1.2.9.2 | 泊位信息发布 | 1d | 2026-03-25 | 2026-03-25 |
| 49 | 1.2.9.3 | 预警信息发布 | 1d | 2026-03-25 | 2026-03-25 |
| 50 | 1.2.10 | **地图处理模块** | 1d | 2026-03-25 | 2026-03-25 |
| 51 | 1.2.10.1 | 地图解析 | 1d | 2026-03-25 | 2026-03-25 |
| 52 | 1.2.10.2 | 地图渲染 | 1d | 2026-03-25 | 2026-03-25 |
| 53 | 1.3 | 信息服务系统 （web端） | 1d | 2026-03-25 | 2026-03-25 |

| ID | WBS | Task | Duration | Start | Finish |
| --- | --- | --- | --- | --- | --- |
| 54 | 1.4 | **Map地图云服务** | 1d | 2026-03-25 | 2026-03-25 |
| 55 | 1.4.1 | 地图概览 | 1d | 2026-03-25 | 2026-03-25 |
| 56 | 1.4.2 | 地图分组 | 1d | 2026-03-25 | 2026-03-25 |
| 57 | 1.4.3 | 03 | 1d | 2026-03-25 | 2026-03-25 |
| 58 | 1.4.4 | 04 | 1d | 2026-03-25 | 2026-03-25 |
| 59 | 1.4.5 | 05 | 1d | 2026-03-25 | 2026-03-25 |
| 60 | 1.5 | **交通事件管理** | 1d | 2026-03-25 | 2026-03-25 |
| 61 | 1.5.1 | 事件动态管理 | 1d | 2026-03-25 | 2026-03-25 |
| 62 | 1.5.2 | 事件发布记录 | 1d | 2026-03-25 | 2026-03-25 |
| 63 | 1.5.3 | 自动转发规则 | 1d | 2026-03-25 | 2026-03-25 |
| 64 | 1.6 | **标志标牌管理** | 1d | 2026-03-25 | 2026-03-25 |
| 65 | 1.6.1 | 标志标牌资源概览 | 1d | 2026-03-25 | 2026-03-25 |
| 66 | 1.6.2 | 导入标志标牌资源 | 1d | 2026-03-25 | 2026-03-25 |
| 67 | 1.6.3 | 标志标牌任务下发 | 1d | 2026-03-25 | 2026-03-25 |
| 68 | 1.7 | **统一账户管理** | 1d | 2026-03-25 | 2026-03-25 |
| 69 | 1.7.1 | 组织管理 | 1d | 2026-03-25 | 2026-03-25 |
| 70 | 1.7.2 | 用户管理 | 1d | 2026-03-25 | 2026-03-25 |
| 71 | 1.7.3 | 角色管理 | 1d | 2026-03-25 | 2026-03-25 |
| 72 | 1.8 | **设备接入管理** | 1d | 2026-03-25 | 2026-03-25 |
| 73 | 1.8.1 | 设备类型管理 | 1d | 2026-03-25 | 2026-03-25 |
| 74 | 1.8.2 | 产品管理 | 1d | 2026-03-25 | 2026-03-25 |
| 75 | 1.8.3 | 设备管理 | 1d | 2026-03-25 | 2026-03-25 |
| 76 | 1.8.4 | 协议管理 | 1d | 2026-03-25 | 2026-03-25 |
| 77 | 1.9 | 应用管理系统 （web端） | 1d | 2026-03-25 | 2026-03-25 |
